# UAE Etisalat - vIMS deployment_PA1

Schedule from MS Project, 2018-01-07 to 2018-10-01.
Ericsson
<PA15> kickoff date set to Mar-5 Ahmed suggest to put IPWorks out of scope, IPWork may move to IPWokrs-FE. / <PA14>Move OSS,EMA,Charging integration into PH2, and short PH1 verificiation time / <PA13>move ECM from PH01 to PH2

## Calendars

- Standard: Mon-Thu 08:00-12:00, 13:00-17:00; Fri-Sat off; Sun 08:00-12:00, 13:00-17:00. Exceptions (off unless hours are given): 2018-04-13 (Israa & Miaraj Night), 2018-06-14 (Eid Al Fitr Holiday), 2018-06-15 (Eid Al Fitr), 2018-08-21 (Arafat (Haj) Day), 2018-08-22 (Eid Al Adha), 2018-08-23 (Eid Al Adha Holiday), 2018-08-26 (Eid al-Adha Holiday), 2018-09-11 (Hijri New Years Day).

## Schedule

| ID | WBS | Task | Type | Duration | Start | Finish | Predecessors | Total slack | Free slack | Constraint |
| --- | --- | --- | --- | --- | --- | --- | --- | --- | --- | --- |
| 1 | 1 | **IMS Modernization** |  | 176d | 2018-01-21 | 2018-10-01 |  | 0d |  |  |
| 2 | 1.1 | **vIMS Deployment** |  | 176d | 2018-01-21 | 2018-10-01 |  | 0d |  |  |
| 3 | 1.1.1 | MS 1: Contract signed-Project kickoff | milestone | 0d | 2018-01-21 | 2018-01-21 |  | 0d |  | start no earlier than 2018-01-21 |
| 4 | 1.1.2 | Project Mobilization phase |  | 5d | 2018-01-21 | 2018-01-25 | 3 | 0d |  | start no earlier than 2017-03-12 |
| 5 | 1.1.3 | **Solution Design** |  | 50d | 2018-01-28 | 2018-04-05 |  | 3d | 0d |  |
| 6 | 1.1.3.1 | **User Requirement Analysis** |  | 5d | 2018-01-28 | 2018-02-01 |  | 3d | 0d |  |
| 7 | 1.1.3.1.1 | Information Gathering and Solution Update |  | 5d | 2018-01-28 | 2018-02-01 | 4 | 3d |  |  |
| 8 | 1.1.3.2 | Solution approved by Etisalat | milestone | 0d | 2018-02-01 | 2018-02-01 | 6 | 3d | 0d |  |
| 9 | 1.1.3.3 | **Service Layer Design** |  | 13d | 2018-02-04 | 2018-02-20 |  | 153d |  |  |
| 10 | 1.1.3.3.1 | SL Design Information Gathering |  | 5d | 2018-02-04 | 2018-02-08 | 8 | 153d | 0d |  |
| 11 | 1.1.3.3.2 | SL Design Preparation and review |  | 5d | 2018-02-11 | 2018-02-15 | 10 | 153d | 0d |  |
| 12 | 1.1.3.3.3 | SL CCF Design(Firewall) |  | 3d | 2018-02-18 | 2018-02-20 | 11 | 153d |  |  |
| 13 | 1.1.3.4 | **High Level Design Preparation** |  | 25d | 2018-02-04 | 2018-03-08 |  | 3d |  |  |
| 14 | 1.1.3.4.1 | HLD for BSP/RHOSP |  | 20d | 2018-02-04 | 2018-03-01 | 8 | 13d | 0d |  |
| 15 | 1.1.3.4.2 | HLD for vIMS |  | 25d | 2018-02-04 | 2018-03-08 | 8 | 3d | 0d |  |
| 16 | 1.1.3.5 | **Low Level Design Preparation** |  | 25d | 2018-03-04 | 2018-04-05 |  | 3d | 0d |  |
| 17 | 1.1.3.5.1 | LLD for BSP/RHOSP |  | 15d | 2018-03-04 | 2018-03-22 | 14 | 13d |  |  |
| 18 | 1.1.3.5.2 | LLD for vIMS(vSBC,vCSCF,vMTAS,vIPworks,vBGF,vAFG,vEme) |  | 20d | 2018-03-11 | 2018-04-05 | 15 | 3d |  |  |
| 19 | 1.1.3.6 | **Verification Test Design Preparation** |  | 15d | 2018-03-04 | 2018-03-22 |  | 131d |  |  |
| 20 | 1.1.3.6.1 | NFVi ATP Preparation |  | 10d | 2018-03-04 | 2018-03-15 | 14 | 136d |  |  |
| 21 | 1.1.3.6.2 | Traffic ATP Preparation |  | 10d | 2018-03-11 | 2018-03-22 | 15 | 131d |  |  |
| 22 | 1.1.4 | MS 2: Solution design complete | milestone | 0d | 2018-04-05 | 2018-04-05 | 5 | 121d |  |  |
| 23 | 1.1.5 | **HW and SW ordering** |  | 41d | 2018-01-28 | 2018-03-25 |  | 0d |  |  |
| 24 | 1.1.5.1 | **HW Ordering** |  | 41d | 2018-01-28 | 2018-03-25 |  | 0d |  |  |
| 25 | 1.1.5.1.1 | Order Placed as per BoQ |  | 1d | 2018-01-28 | 2018-01-28 | 4 | 0d |  |  |
| 26 | 1.1.5.1.2 | Lead Time for HW delivery |  | 8w | 2018-01-29 | 2018-03-25 | 25 | 0d |  |  |

| ID | WBS | Task | Type | Duration | Start | Finish | Predecessors | Total slack | Free slack |
| --- | --- | --- | --- | --- | --- | --- | --- | --- | --- |
| 27 | 1.1.5.2 | **SW Ordering** |  | 10d | 2018-01-28 | 2018-02-08 |  | 161d |  |
| 28 | 1.1.5.2.1 | SW ordering |  | 1w | 2018-01-28 | 2018-02-01 | 4 | 161d | 0d |
| 29 | 1.1.5.2.2 | Licenses ordering |  | 5d | 2018-02-04 | 2018-02-08 | 28 | 161d |  |
| 30 | 1.1.6 | **Site Engineering & HW Installation** |  | 51d | 2018-02-04 | 2018-04-15 |  | 26d | 0d |
| 31 | 1.1.6.1 | Site Survey + Report Preparation |  | 5d | 2018-02-04 | 2018-02-08 | 4FS+5d | 26d | 0d |
| 32 | 1.1.6.2 | C-Module Preparation |  | 5d | 2018-02-11 | 2018-02-15 | 31 | 26d |  |
| 33 | 1.1.6.3 | HW Installation & Cabling of BSP(Site 1) |  | 5d | 2018-03-26 | 2018-04-01 | 24, 32 | 0d |  |
| 34 | 1.1.6.4 | HW Installation & Cabling of BSP(Site 2) |  | 5d | 2018-04-02 | 2018-04-08 | 33 | 0d |  |
| 35 | 1.1.6.5 | HW Installation & Cabling of BSP(Test Bed) |  | 5d | 2018-04-09 | 2018-04-15 | 34 | 38d | 0d |
| 36 | 1.1.7 | MS 3: vIMS node power on | milestone | 0d | 2018-04-15 | 2018-04-15 | 30 | 115d |  |
| 37 | 1.1.8 | **Solution Deployment** |  | 83d | 2018-04-08 | 2018-08-01 |  | 3d |  |
| 38 | 1.1.8.1 | **Solution Deployment(Test Bed)** |  | 77d | 2018-04-16 | 2018-08-01 |  | 38d |  |
| 39 | 1.1.8.1.1 | **Platform & VNF SW Installation(Test Bed)** |  | 20d | 2018-04-16 | 2018-05-13 |  | 38d | 0d |
| 40 | 1.1.8.1.1.1 | BSP installation |  | 10d | 2018-04-16 | 2018-04-29 | 35 | 38d | 0d |
| 41 | 1.1.8.1.1.2 | RHOSP installation |  | 5d | 2018-04-30 | 2018-05-06 | 40 | 38d | 0d |
| 42 | 1.1.8.1.1.3 | VNF(vSBC,vCSCF,vMTAS,vIPworks,vBGF,vAFG,vEme) Instantiation & Configuration |  | 5d | 2018-05-07 | 2018-05-13 | 41 | 38d |  |
| 43 | 1.1.8.1.2 | **vIMS Integration(Test Bed)** |  | 22d | 2018-05-14 | 2018-06-12 |  | 38d | 0d |
| 44 | 1.1.8.1.2.1 | Service Layer integration(NFVI+IPBB integration) |  | 5d | 2018-05-14 | 2018-05-20 | 39 | 38d | 0d |
| 45 | 1.1.8.1.2.2 | vIMS internal integration(vCSCF,vSBG,vMTAS,vIPwoks) |  | 4d | 2018-05-21 | 2018-05-24 | 44 | 38d | 0d |
| 46 | 1.1.8.1.2.3 | vIMS integration with EPC,vEPC,UDC,MRS |  | 5d | 2018-05-27 | 2018-05-31 | 45 | 38d | 0d |
| 47 | 1.1.8.1.2.4 | vAFG deployment & configuration & integration |  | 5d | 2018-05-27 | 2018-05-31 | 45 | 46d |  |
| 48 | 1.1.8.1.2.5 | vIMS integration with CS/UT |  | 5d | 2018-06-03 | 2018-06-07 | 46 | 41d |  |
| 49 | 1.1.8.1.2.6 | vIMS integration with OSS |  | 3d | 2018-06-03 | 2018-06-05 | 46 | 38d | 0d |
| 50 | 1.1.8.1.2.7 | vIMS integration with Charging |  | 5d | 2018-06-06 | 2018-06-12 | 49 | 38d |  |
| 51 | 1.1.8.1.2.8 | vIMS integration with Provisioning |  | 5d | 2018-06-06 | 2018-06-12 | 49 | 38d |  |
| 52 | 1.1.8.1.3 | Internal Testings and Verifications |  | 20d | 2018-06-13 | 2018-07-11 | 43 | 38d | 0d |

| ID | WBS | Task | Type | Duration | Start | Finish | Predecessors | Total slack | Free slack |
| --- | --- | --- | --- | --- | --- | --- | --- | --- | --- |
| 53 | 1.1.8.1.4 | **Customer acceptance of Test Bed Deployments** |  | 15d | 2018-07-12 | 2018-08-01 |  | 38d |  |
| 54 | 1.1.8.1.4.1 | New HW Acceptance |  | 5d | 2018-07-12 | 2018-07-18 | 52 | 38d | 0d |
| 55 | 1.1.8.1.4.2 | vIMS Test Bed Solution Acceptance |  | 10d | 2018-07-19 | 2018-08-01 | 54 | 38d |  |
| 56 | 1.1.8.2 | **Solution Deployment(Site1)** |  | 50d | 2018-04-08 | 2018-06-17 |  | 3d | 0d |
| 57 | 1.1.8.2.1 | **Platform and VNF SW Installation** |  | 20d | 2018-04-08 | 2018-05-03 |  | 3d | 0d |
| 58 | 1.1.8.2.1.1 | BSP SW installation |  | 10d | 2018-04-08 | 2018-04-19 | 16, 33FS+2d | 3d | 0d |
| 59 | 1.1.8.2.1.2 | RHOSP installation |  | 5d | 2018-04-22 | 2018-04-26 | 58 | 3d | 0d |
| 60 | 1.1.8.2.1.3 | VNF(vSBC,vCSCF,vMTAS,vIPworks,vBGF,vAFG,vEMe)Instantiation & Configuration |  | 5d | 2018-04-29 | 2018-05-03 | 59 | 3d |  |
| 61 | 1.1.8.2.2 | **vIMS Integration** |  | 30d | 2018-05-06 | 2018-06-17 |  | 3d |  |
| 62 | 1.1.8.2.2.1 | Servise Layer integration(NFVI+IPBB integration) |  | 5d | 2018-05-06 | 2018-05-10 | 57 | 3d | 0d |
| 63 | 1.1.8.2.2.2 | vIMS internal integration(vCSCF,vSBG,vMTAS,vIPwoks) |  | 5d | 2018-05-13 | 2018-05-17 | 62 | 3d | 0d |
| 64 | 1.1.8.2.2.3 | vIMS integration with EPC,vEPC,UDC,MRS |  | 10d | 2018-05-20 | 2018-05-31 | 63 | 3d | 0d |
| 65 | 1.1.8.2.2.4 | vAFG deployment & configuration & integration |  | 12d | 2018-05-20 | 2018-06-04 | 63 | 11d |  |
| 66 | 1.1.8.2.2.5 | vIMS integration with CS/UT |  | 10d | 2018-06-03 | 2018-06-17 | 64 | 3d |  |
| 67 | 1.1.8.2.2.6 | vIMS integration with OSS |  | 5d | 2018-06-03 | 2018-06-07 | 64 | 3d | 0d |
| 68 | 1.1.8.2.2.7 | vIMS integration with Charging |  | 5d | 2018-06-10 | 2018-06-17 | 67 | 3d |  |
| 69 | 1.1.8.2.2.8 | vIMS integration with Provisioning |  | 5d | 2018-06-10 | 2018-06-17 | 67 | 3d |  |
| 70 | 1.1.8.3 | MS 4: vIMS site 1 complete | milestone | 0d | 2018-06-17 | 2018-06-17 | 56 | 71d |  |
| 71 | 1.1.8.4 | **Solution Deployment(Site2)** |  | 50d | 2018-04-11 | 2018-06-20 |  | 0d |  |
| 72 | 1.1.8.4.1 | **Platform & VNF SW Installation(Site2)** |  | 20d | 2018-04-11 | 2018-05-08 |  | 0d |  |
| 73 | 1.1.8.4.1.1 | BSP SW installation |  | 10d | 2018-04-11 | 2018-04-24 | 16, 34FS+2d | 0d |  |
| 74 | 1.1.8.4.1.2 | RHOSP installation |  | 5d | 2018-04-25 | 2018-05-01 | 73 | 0d |  |
| 75 | 1.1.8.4.1.3 | VNF(vSBC,vCSCF,vMTAS,vIPworks,vBGF,vAFG,vEme)Instantiation & Configuration |  | 5d | 2018-05-02 | 2018-05-08 | 74 | 0d |  |
| 76 | 1.1.8.4.2 | **vIMS Integration** |  | 30d | 2018-05-09 | 2018-06-20 |  | 0d |  |
| 77 | 1.1.8.4.2.1 | Service Layer integration(switch configuration) |  | 5d | 2018-05-09 | 2018-05-15 | 72 | 0d |  |
| 78 | 1.1.8.4.2.2 | vIMS internal integration(vCSCF,vSBG,vMTAS,vIPwoks) |  | 5d | 2018-05-16 | 2018-05-22 | 77 | 0d |  |
| 79 | 1.1.8.4.2.3 | vIMS integration with EPC,vEPC,UDC,MRS |  | 10d | 2018-05-23 | 2018-06-05 | 78 | 0d |  |
| 80 | 1.1.8.4.2.4 | vAFG deployment & configuration & integration |  | 12d | 2018-05-23 | 2018-06-07 | 78 | 8d |  |
| 81 | 1.1.8.4.2.5 | vIMS integration with CS/UT,OSS,Charging and Provisioning |  | 10d | 2018-06-06 | 2018-06-20 | 79 | 0d |  |
| 82 | 1.1.8.4.2.6 | vIMS integration with OSS |  | 5d | 2018-06-06 | 2018-06-12 | 79 | 0d |  |
| 83 | 1.1.8.4.2.7 | vIMS integration with Charging |  | 5d | 2018-06-13 | 2018-06-20 | 82 | 0d |  |
| 84 | 1.1.8.4.2.8 | vIMS integration with Provisioning |  | 5d | 2018-06-13 | 2018-06-20 | 82 | 0d |  |
| 85 | 1.1.8.5 | MS 5: vIMS site 2 complete | milestone | 0d | 2018-06-20 | 2018-06-20 | 71 | 68d |  |
| 86 | 1.1.8.6 | vIMS Internal test and Verification |  | 20d | 2018-06-21 | 2018-07-18 | 76, 61 | 0d |  |
| 87 | 1.1.9 | MS 6: vIMS Ready for acceptance | milestone | 0d | 2018-07-18 | 2018-07-18 | 86 | 0d |  |

| ID | WBS | Task | Type | Duration | Start | Finish | Predecessors | Total slack | Free slack |
| --- | --- | --- | --- | --- | --- | --- | --- | --- | --- |
| 88 | 1.1.10 | **Acceptance of LIVE Node Deployments** |  | 26d | 2018-07-19 | 2018-08-29 |  | 0d |  |
| 89 | 1.1.10.1 | Site 1 HW Acceptance |  | 3d | 2018-07-19 | 2018-07-23 | 87 | 0d |  |
| 90 | 1.1.10.2 | Site 2 HW Acceptance |  | 3d | 2018-07-24 | 2018-07-26 | 89 | 0d |  |
| 91 | 1.1.10.3 | Ericsson Cloud Execution Environment Customer Demonstartion |  | 5d | 2018-07-29 | 2018-08-02 | 90 | 0d |  |
| 92 | 1.1.10.4 | vIMS Solution Acceptance Tests |  | 15d | 2018-08-05 | 2018-08-29 | 91 | 0d |  |
| 93 | 1.1.11 | MS 7: vIMS Ready for service | milestone | 0d | 2018-08-29 | 2018-08-29 | 88 | 0d |  |
| 94 | 1.1.12 | **Traffic migration** |  | 22d | 2018-08-30 | 2018-10-01 |  | 0d |  |
| 95 | 1.1.12.1 | vIMS Stabilization+Data Freeze Period after LIVE RFS |  | 5d | 2018-08-30 | 2018-09-05 | 93 | 0d |  |
| 96 | 1.1.12.2 | Traffic Cutover |  | 15d | 2018-09-06 | 2018-09-27 | 95 | 0d |  |
| 97 | 1.1.12.3 | Baby sitting |  | 2d | 2018-09-30 | 2018-10-01 | 96 | 0d |  |
| 98 | 1.1.13 | MS 8: vIMS traffic migration complete | milestone | 0d | 2018-10-01 | 2018-10-01 | 94 | 0d |  |
| 99 | 1.2 | **Legacy IMS SW Upgrade** |  | 26d | 2018-01-21 | 2018-02-25 |  | 150d |  |
| 100 | 1.2.1 | **Native MRS SW Upgrade** |  | 26d | 2018-01-21 | 2018-02-25 |  | 150d |  |
| 101 | 1.2.1.1 | MRS Upgrade Kickoff | milestone | 0d | 2018-01-21 | 2018-01-21 | 3 | 150d | 0d |
| 102 | 1.2.1.2 | NIR Analysis preparation |  | 3d | 2018-01-21 | 2018-01-23 | 101 | 150d | 0d |
| 103 | 1.2.1.3 | MS: NIR submit to Etisalat | milestone | 0d | 2018-01-23 | 2018-01-23 | 102 | 150d | 0d |
| 104 | 1.2.1.4 | SW Order |  | 5d | 2018-01-24 | 2018-01-30 | 103 | 168d |  |
| 105 | 1.2.1.5 | HLD&LLD update |  | 1d | 2018-01-24 | 2018-01-24 | 103 | 172d |  |
| 106 | 1.2.1.6 | MOP Preparaion |  | 5d | 2018-01-24 | 2018-01-30 | 103 | 150d | 0d |
| 107 | 1.2.1.7 | MS: MOP submit to Etisalat | milestone | 0d | 2018-01-30 | 2018-01-30 | 106 | 150d | 0d |
| 108 | 1.2.1.8 | Testbed UPG Verification and regression test |  | 8d | 2018-01-31 | 2018-02-11 | 107 | 150d | 0d |
| 109 | 1.2.1.9 | Live MRS Upgrade |  | 10d | 2018-02-12 | 2018-02-25 | 108 | 150d |  |
| 110 | 1.2.2 | **Native IPWorks SW Upgrade** |  | 26d | 2018-01-21 | 2018-02-25 |  | 150d |  |
| 111 | 1.2.2.1 | IPWorks SW Upgrade Kickoff | milestone | 0d | 2018-01-21 | 2018-01-21 | 3 | 150d | 0d |
| 112 | 1.2.2.2 | NIR Analysis preparation |  | 3d | 2018-01-21 | 2018-01-23 | 111 | 150d | 0d |
| 113 | 1.2.2.3 | MS: NIR submit to Etisalat | milestone | 0d | 2018-01-23 | 2018-01-23 | 112 | 150d | 0d |
| 114 | 1.2.2.4 | SW Order |  | 5d | 2018-01-24 | 2018-01-30 | 113 | 168d |  |
| 115 | 1.2.2.5 | HLD&LLD update |  | 1d | 2018-01-24 | 2018-01-24 | 113 | 172d |  |
| 116 | 1.2.2.6 | MOP Preparaion |  | 5d | 2018-01-24 | 2018-01-30 | 113 | 150d | 0d |
| 117 | 1.2.2.7 | MS: MOP submit to Etisalat | milestone | 0d | 2018-01-30 | 2018-01-30 | 116 | 150d | 0d |
| 118 | 1.2.2.8 | Testbed UPG Verification and regression test |  | 10d | 2018-01-31 | 2018-02-13 | 117 | 150d | 0d |
| 119 | 1.2.2.9 | Live IPWorks Upgrade |  | 8d | 2018-02-14 | 2018-02-25 | 118 | 150d |  |

| ID | WBS | Task | Duration | Start | Finish | Predecessors | Total slack | Free slack | Constraint |
| --- | --- | --- | --- | --- | --- | --- | --- | --- | --- |
| 120 | 1.3 | **License Server (NeLS)** | 58d | 2018-01-28 | 2018-04-17 |  | 113d |  |  |
| 121 | 1.3.1 | MS01 - Project Kickoff | 1d | 2018-01-28 | 2018-01-28 | 3FS+5d | 113d | 0d | start no earlier than 2017-05-01 |
| 122 | 1.3.2 | **NeLS Solution Design** | 15d | 2018-01-29 | 2018-02-18 |  | 130d |  |  |
| 123 | 1.3.2.1 | NeLS Architecture Requirement & Analysis | 5d | 2018-01-29 | 2018-02-04 | 121 | 130d | 0d |  |
| 124 | 1.3.2.2 | NeLS High Level Design | 5d | 2018-02-05 | 2018-02-11 | 123 | 130d | 0d |  |
| 125 | 1.3.2.3 | NeLS Low Level Design | 5d | 2018-02-12 | 2018-02-18 | 124 | 130d | 17d |  |
| 126 | 1.3.2.4 | SL design document preparation and follow-up | 5d | 2018-02-05 | 2018-02-11 | 123 | 155d | 0d |  |
| 127 | 1.3.2.5 | CCF Preparation and follow-up (Live and Test) | 5d | 2018-02-12 | 2018-02-18 | 126 | 155d |  |  |
| 128 | 1.3.2.6 | Acceptance Testing Plan (NeLS) | 5d | 2018-02-12 | 2018-02-18 | 124 | 155d |  |  |
| 129 | 1.3.3 | **HW and SW ordering** | 30d | 2018-01-29 | 2018-03-11 |  | 113d |  |  |
| 130 | 1.3.3.1 | **HW Ordering** | 30d | 2018-01-29 | 2018-03-11 |  | 113d |  |  |
| 131 | 1.3.3.1.1 | Order Placed as per BoQ | 5d | 2018-01-29 | 2018-02-04 | 121 | 113d | 0d |  |
| 132 | 1.3.3.1.2 | Lead Time for HW delivery | 25d | 2018-02-05 | 2018-03-11 | 131 | 113d | 0d |  |
| 133 | 1.3.3.2 | **SW Ordering** | 10d | 2018-01-29 | 2018-02-11 |  | 160d |  |  |
| 134 | 1.3.3.2.1 | SW ordering | 5d | 2018-01-29 | 2018-02-04 | 121 | 160d | 0d |  |
| 135 | 1.3.3.2.2 | Licenses ordering | 5d | 2018-02-05 | 2018-02-11 | 134 | 160d |  |  |
| 136 | 1.3.4 | **Site Engineering & HW Installation** | 27d | 2018-02-05 | 2018-03-13 |  | 138d |  |  |
| 137 | 1.3.4.1 | Site Survey + Report Preparation | 2d | 2018-02-05 | 2018-02-06 | 121FS+5d | 158d | 0d |  |
| 138 | 1.3.4.2 | C-Module Preparation | 5d | 2018-02-07 | 2018-02-13 | 137 | 158d |  |  |
| 139 | 1.3.4.3 | HW Installation & Cabling | 2d | 2018-03-12 | 2018-03-13 | 132 | 113d | 0d |  |
| 140 | 1.3.5 | **NeLS Solution Deployment** | 15d | 2018-03-14 | 2018-04-03 |  | 113d |  |  |
| 141 | 1.3.5.1 | NeLS Installation, Configuration and Integration | 15d | 2018-03-14 | 2018-04-03 | 139, 125 | 113d | 0d |  |
| 142 | 1.3.6 | Internal verification | 5d | 2018-04-04 | 2018-04-10 | 141 | 113d | 0d |  |
| 143 | 1.3.7 | Customer Acceptance Test | 5d | 2018-04-11 | 2018-04-17 | 142 | 113d |  |  |

| ID | WBS | Task | Type | Duration | Start | Finish | Predecessors | Total slack | Free slack | Constraint | Text2 |
| --- | --- | --- | --- | --- | --- | --- | --- | --- | --- | --- | --- |
| 144 | 2 | **Optional: Entitlement Server(phase 1)** |  | 70d | 2018-01-07 | 2018-04-12 |  | 116d |  |  |  |
| 145 | 2.1 | MS 1: kickoff | milestone | 0d | 2018-01-07 | 2018-01-07 |  | 151d | 0d | start no earlier than 2018-01-07 |  |
| 146 | 2.2 | **Solution Design** |  | 35d | 2018-01-07 | 2018-02-22 |  | 151d |  |  |  |
| 147 | 2.2.1 | **High Level Design** |  | 20d | 2018-01-07 | 2018-02-01 |  | 156d |  |  |  |
| 148 | 2.2.1.1 | Information gathering and requirement development |  | 10d | 2018-01-07 | 2018-01-18 | 145 | 156d | 5d |  |  |
| 149 | 2.2.1.2 | Apple test case documented | milestone | 0d | 2018-01-07 | 2018-01-07 | 145 | 186d |  |  |  |
| 150 | 2.2.1.3 | NFVi(Mirantis) Update |  | 5d | 2018-01-14 | 2018-01-18 | 145FS+5d | 156d | 0d | finish no earlier than 2018-01-11 | tony dong |
| 151 | 2.2.1.4 | EMA & Provisioning update |  | 10d | 2018-01-14 | 2018-01-25 | 145FS+5d | 151d | 0d | finish no earlier than 2018-01-18 | Tarazi |
| 152 | 2.2.1.5 | Service Layer Design |  | 10d | 2018-01-14 | 2018-01-25 | 150SS | 151d | 0d |  | Mustapha |
| 153 | 2.2.1.6 | HLD finial document |  | 5d | 2018-01-28 | 2018-02-01 | 148, 150, 151, 152 | 151d | 0d |  |  |
| 154 | 2.2.2 | **Low Level Design** |  | 15d | 2018-02-04 | 2018-02-22 |  | 151d |  |  |  |
| 155 | 2.2.2.1 | NFVi(Mirantis) Update |  | 10d | 2018-02-04 | 2018-02-15 | 153 | 156d | 5d | start no earlier than 2018-01-29 | tony dong |
| 156 | 2.2.2.2 | SES |  | 10d | 2018-02-04 | 2018-02-15 | 153 | 151d | 0d | start no earlier than 2018-02-01 | PIC |
| 157 | 2.2.2.3 | Websheet |  | 10d | 2018-02-04 | 2018-02-15 | 153 | 156d | 5d | start no earlier than 2018-02-01 | PIC |
| 158 | 2.2.2.4 | MTAS(Update)+MOP |  | 10d | 2018-02-11 | 2018-02-22 | 156SS+5d | 151d | 0d | start no earlier than 2018-02-01 | SDU-C(Bo Tang) |
| 159 | 2.2.2.5 | EMA(Update)+MOP |  | 5d | 2018-02-11 | 2018-02-15 | 156SS+5d | 156d | 5d | start no earlier than 2018-02-01 | Tarazi |
| 160 | 2.2.2.6 | MSS(Update)+MOP |  | 5d | 2018-02-11 | 2018-02-15 | 156SS+5d | 156d | 5d | start no earlier than 2018-02-01 | SDU-C |
| 161 | 2.2.2.7 | LI-IMS(Update)+MOP |  | 5d | 2018-02-11 | 2018-02-15 | 156SS+5d | 156d | 5d | start no earlier than 2018-02-01 | Arlan |
| 162 | 2.2.2.8 | EMM(Update)+MOP |  | 10d | 2018-02-11 | 2018-02-22 | 156SS+5d | 151d | 0d |  | BAE(Kristian) |
| 163 | 2.2.2.9 | HSS(Update)+MOP |  | 5d | 2018-02-11 | 2018-02-15 | 156SS+5d | 156d | 5d |  | SDU-C(David Lin) |
| 164 | 2.2.2.10 | IPWorks-AAA(Update)+MOP |  | 5d | 2018-02-11 | 2018-02-15 | 156SS+5d | 156d | 5d |  | Atif |
| 165 | 2.2.2.11 | OSS/ENIQ(Update)+MOP |  | 5d | 2018-02-11 | 2018-02-15 | 156SS+5d | 156d | 5d |  | Hammad |
| 166 | 2.2.2.12 | SW ATP document for SES,Websheet |  | 5d | 2018-02-04 | 2018-02-08 | 153 | 161d | 10d |  | PIC |
| 167 | 2.2.2.13 | LLD acceptance | milestone | 0d | 2018-02-22 | 2018-02-22 | 155, 156, 157, 158, 159, 160, 161, 162, 163, 165, 166, 164 | 151d |  |  |  |

| ID | WBS | Task | Duration | Start | Finish | Predecessors | Total slack | Free slack | Constraint | Text2 |
| --- | --- | --- | --- | --- | --- | --- | --- | --- | --- | --- |
| 168 | 2.3 | **SW Ordering** | 15d | 2018-01-28 | 2018-02-15 |  | 116d | 0d |  |  |
| 169 | 2.3.1 | SW ordering | 5d | 2018-01-28 | 2018-02-01 | 4 | 121d | 0d | start no earlier than 2018-01-09 |  |
| 170 | 2.3.2 | Licenses key file generate | 5d | 2018-02-04 | 2018-02-08 | 169 | 121d | 0d | start no earlier than 2018-01-02 |  |
| 171 | 2.3.3 | MSS customization | 15d | 2018-01-28 | 2018-02-15 | 4 | 116d | 0d | start no earlier than 2018-01-02 | check delivery time |
| 172 | 2.3.4 | MTAS new feature ordering | 5d | 2018-01-28 | 2018-02-01 | 4 | 126d | 10d | start no earlier than 2018-01-02 |  |
| 173 | 2.3.5 | HSS new feature ordering | 5d | 2018-01-28 | 2018-02-01 | 4 | 126d |  | start no earlier than 2018-01-02 |  |
| 174 | 2.4 | **Deploymentand Integration** | 25d | 2018-02-11 | 2018-03-15 |  | 121d |  |  |  |
| 175 | 2.4.1 | Instantiation of vSES | 10d | 2018-02-11 | 2018-02-22 | 169, 170 | 121d | 5d |  |  |
| 176 | 2.4.2 | **MSIM feature Activation** | 10d | 2018-02-18 | 2018-03-01 |  | 116d |  |  |  |
| 177 | 2.4.2.1 | MSIM feature Activation in existing MTAS(sites1&2) | 10d | 2018-02-18 | 2018-03-01 | 168, 172 | 116d | 0d |  |  |
| 178 | 2.4.2.2 | CSCF configuration | 2d | 2018-02-18 | 2018-02-19 | 168, 172 | 154d |  |  |  |
| 179 | 2.4.2.3 | SBG configuration | 2d | 2018-02-18 | 2018-02-19 | 168, 172 | 154d |  |  |  |
| 180 | 2.4.3 | MSCs(MST2,MS21,22,24) Customizations Deployment | 15d | 2018-02-18 | 2018-03-08 | 171 | 141d |  |  |  |
| 181 | 2.4.4 | **Configuration & Integrations** | 10d | 2018-03-04 | 2018-03-15 |  | 116d | 0d |  |  |
| 182 | 2.4.4.1 | vSES integration with Ericsson EMA | 5d | 2018-03-04 | 2018-03-08 | 175, 177 | 121d |  |  |  |
| 183 | 2.4.4.2 | vSES integration with Etisalat’s eSIM server | 10d | 2018-03-04 | 2018-03-15 | 175, 177 | 116d |  |  |  |
| 184 | 2.4.4.3 | vSES integration with Etisalat’s WebSheet sserver | 10d | 2018-03-04 | 2018-03-15 | 175, 177 | 116d |  |  |  |
| 185 | 2.4.4.4 | vSES integration with Ericsson AAA | 5d | 2018-03-04 | 2018-03-08 | 175, 177 | 121d |  |  |  |
| 186 | 2.4.4.5 | vSES integration OSS/ENIQ | 5d | 2018-03-04 | 2018-03-08 | 175, 177 | 121d |  |  |  |
| 187 | 2.4.4.6 | CEE integration with OSS-RC | 5d | 2018-03-04 | 2018-03-08 | 175, 177 | 121d |  |  |  |
| 188 | 2.4.4.7 | HSS configuration | 2d | 2018-03-04 | 2018-03-05 | 177, 175 | 124d |  |  |  |
| 189 | 2.4.4.8 | EMM configuration | 2d | 2018-03-04 | 2018-03-05 | 177, 175 | 124d |  |  |  |
| 190 | 2.4.4.9 | LI Warrant configuration | 2d | 2018-03-04 | 2018-03-05 | 177, 175 | 124d |  |  |  |
| 191 | 2.5 | **Testing** | 20d | 2018-03-18 | 2018-04-12 |  | 116d |  |  |  |
| 192 | 2.5.1 | E2E testing with E/// IMS and E/// MS | 20d | 2018-03-18 | 2018-04-12 | 181 | 116d |  |  |  |
| 193 | 2.5.2 | CIT testing | 20d | 2018-03-18 | 2018-04-12 | 181 | 116d |  |  |  |
| 194 | 2.5.3 | ISS testing | 20d | 2018-03-18 | 2018-04-12 | 181 | 116d |  |  |  |

| ID | WBS | Task | Type | Duration | Start | Finish | Predecessors | Total slack | Free slack | Constraint |
| --- | --- | --- | --- | --- | --- | --- | --- | --- | --- | --- |
| 195 | 3 | **Optional: Entitlement Server(phase 2)** |  | 104d | 2018-01-25 | 2018-06-21 |  | 67d |  |  |
| 196 | 3.1 | MS 1: vSES PO Received | milestone | 0d | 2018-01-25 | 2018-01-25 | 3FS+5d | 71d | 0d | start no earlier than 2018-01-25 |
| 197 | 3.2 | **Solution Design** |  | 47d | 2018-01-28 | 2018-04-02 |  | 124d | 0d |  |
| 198 | 3.2.1 | Requirement Development |  | 2d | 2018-01-28 | 2018-01-29 | 196 | 124d | 0d |  |
| 199 | 3.2.2 | Service Layer Design |  | 20d | 2018-01-30 | 2018-02-26 | 198 | 149d |  |  |
| 200 | 3.2.3 | **High Level Design** |  | 20d | 2018-01-30 | 2018-02-26 |  | 124d | 0d |  |
| 201 | 3.2.3.1 | NFVi(RHOSP) |  | 20d | 2018-01-30 | 2018-02-26 | 198 | 124d |  |  |
| 202 | 3.2.3.2 | SES |  | 20d | 2018-01-30 | 2018-02-26 | 198 | 124d |  |  |
| 203 | 3.2.3.3 | EMA & Provisioning |  | 20d | 2018-01-30 | 2018-02-26 | 198 | 124d |  |  |
| 204 | 3.2.4 | **Low Level Design** |  | 10d | 2018-02-27 | 2018-03-12 |  | 139d |  |  |
| 205 | 3.2.4.1 | NFVi(RHOSP) |  | 10d | 2018-02-27 | 2018-03-12 | 200 | 139d |  |  |
| 206 | 3.2.4.2 | MTAS(Update)+MOP |  | 10d | 2018-02-27 | 2018-03-12 | 200 | 139d |  |  |
| 207 | 3.2.4.3 | SES |  | 10d | 2018-02-27 | 2018-03-12 | 200 | 139d |  |  |
| 208 | 3.2.4.4 | Websheet |  | 10d | 2018-02-27 | 2018-03-12 | 200 | 139d |  |  |
| 209 | 3.2.4.5 | CSCF(Update)+MOP |  | 10d | 2018-02-27 | 2018-03-12 | 200 | 139d |  |  |
| 210 | 3.2.4.6 | SBG(Update) |  | 5d | 2018-02-27 | 2018-03-05 | 200 | 144d |  |  |
| 211 | 3.2.5 | Definition of use TC with Apple |  | 25d | 2018-02-27 | 2018-04-02 | 200 | 124d |  |  |
| 212 | 3.3 | MS 2: vSES Solution Design Complete | milestone | 0d | 2018-04-02 | 2018-04-02 | 197 | 124d |  |  |
| 213 | 3.4 | **SW Ordering** |  | 10d | 2018-02-04 | 2018-02-15 |  | 71d | 0d |  |
| 214 | 3.4.1 | SW ordering |  | 5d | 2018-02-04 | 2018-02-08 | 196FS+5d | 71d | 0d |  |
| 215 | 3.4.2 | Licenses ordering |  | 5d | 2018-02-11 | 2018-02-15 | 214 | 71d |  |  |
| 216 | 3.5 | **Implementation in RHOSP** |  | 73d | 2018-02-18 | 2018-05-29 |  | 71d | 0d |  |
| 217 | 3.5.1 | Instantiation of vSES on RHOSP in Site1&2 |  | 10d | 2018-05-02 | 2018-05-15 | 59, 74 | 67d | 0d |  |
| 218 | 3.5.2 | MSIM feature Activation in existing MTAS(sites1&2) |  | 5d | 2018-05-16 | 2018-05-22 | 217 | 88d |  |  |

| ID | WBS | Task | Type | Duration | Start | Finish | Predecessors | Total slack | Free slack |
| --- | --- | --- | --- | --- | --- | --- | --- | --- | --- |
| 219 | 3.5.3 | **New integrations** |  | 10d | 2018-05-16 | 2018-05-29 |  | 83d |  |
| 220 | 3.5.3.1 | EMA with Ericsson vSES |  | 5d | 2018-05-16 | 2018-05-22 | 217 | 88d |  |
| 221 | 3.5.3.2 | vSES with Etisalat’s eSIM server |  | 10d | 2018-05-16 | 2018-05-29 | 217 | 83d |  |
| 222 | 3.5.3.3 | vSES with Etisalat’s WebSheet sserver |  | 10d | 2018-05-16 | 2018-05-29 | 217 | 83d |  |
| 223 | 3.5.3.4 | vSES with Ericsson AAA |  | 5d | 2018-05-16 | 2018-05-22 | 217 | 88d |  |
| 224 | 3.5.3.5 | vSES to OSS‐ RC for FPM |  | 5d | 2018-05-16 | 2018-05-22 | 217 | 88d |  |
| 225 | 3.5.3.6 | Cloud to OSS‐ RC |  | 5d | 2018-05-16 | 2018-05-22 | 217 | 88d |  |
| 226 | 3.5.4 | **System configurations** |  | 6d | 2018-05-16 | 2018-05-23 |  | 67d | 0d |
| 227 | 3.5.4.1 | MSIM feature inMTAS |  | 2d | 2018-05-16 | 2018-05-17 | 217 | 67d | 0d |
| 228 | 3.5.4.2 | Parameter in CSCF |  | 2d | 2018-05-20 | 2018-05-21 | 227 | 67d | 0d |
| 229 | 3.5.4.3 | Parameter in SBG |  | 2d | 2018-05-22 | 2018-05-23 | 228 | 67d |  |
| 230 | 3.5.5 | **Customizations Development** |  | 45d | 2018-02-18 | 2018-04-19 |  | 71d |  |
| 231 | 3.5.5.1 | Ericsson MSCs |  | 45d | 2018-02-18 | 2018-04-19 | 213 | 71d | 0d |
| 232 | 3.5.5.2 | Ericsson vSES |  | 45d | 2018-02-18 | 2018-04-19 | 213 | 109d | 0d |
| 233 | 3.5.6 | **Customizations Loading** |  | 20d | 2018-04-22 | 2018-05-17 |  | 71d | 4d |
| 234 | 3.5.6.1 | **MSC Customization** |  | 20d | 2018-04-22 | 2018-05-17 |  | 71d |  |
| 235 | 3.5.6.1.1 | on Test MSC |  | 5d | 2018-04-22 | 2018-04-26 | 231 | 71d | 0d |
| 236 | 3.5.6.1.2 | on MSC21 |  | 5d | 2018-04-29 | 2018-05-03 | 235 | 71d | 0d |
| 237 | 3.5.6.1.3 | on MSC22 |  | 5d | 2018-05-06 | 2018-05-10 | 236 | 71d | 0d |
| 238 | 3.5.6.1.4 | on MSC24 |  | 5d | 2018-05-13 | 2018-05-17 | 237 | 71d |  |
| 239 | 3.5.7 | **vSES Customization for Huawei** |  | 2d | 2018-04-22 | 2018-04-23 |  | 109d |  |
| 240 | 3.5.7.1 | Site 1 |  | 1d | 2018-04-22 | 2018-04-22 | 232 | 109d | 0d |
| 241 | 3.5.7.2 | Site 2 |  | 1d | 2018-04-23 | 2018-04-23 | 240 | 109d |  |
| 242 | 3.6 | MS 3: vSES Implementation Complete | milestone | 0d | 2018-05-29 | 2018-05-29 | 216 | 83d |  |

| ID | WBS | Task | Type | Duration | Start | Finish | Predecessors | Total slack | Free slack | Constraint |
| --- | --- | --- | --- | --- | --- | --- | --- | --- | --- | --- |
| 243 | 3.7 | **Testing** |  | 20d | 2018-05-24 | 2018-06-21 |  | 67d | 0d |  |
| 244 | 3.7.1 | E2E testing with E/// IMS and E/// MS |  | 20d | 2018-05-24 | 2018-06-21 | 226, 233 | 67d |  |  |
| 245 | 3.8 | MS 4: vSES Acceptance complete | milestone | 0d | 2018-06-21 | 2018-06-21 | 243 | 67d |  |  |
| 246 | 4 | **Optional: IMS Upgrade LI-IMS** |  | 111d | 2018-01-25 | 2018-07-02 |  | 60d |  |  |
| 247 | 4.1 | MS 1: LI-IMS PO Received | milestone | 0d | 2018-01-25 | 2018-01-25 | 3FS+5d | 60d | 0d | start no earlier than 2016-11-01 |
| 248 | 4.2 | **Solution Design** |  | 25d | 2018-02-04 | 2018-03-08 | 247FS+5d | 76d | 0d |  |
| 249 | 4.2.1 | User Requirement and information Gathering |  | 10d | 2018-02-04 | 2018-02-15 | 247 | 76d | 0d |  |
| 250 | 4.2.2 | High Level Design Preparation |  | 10d | 2018-02-18 | 2018-03-01 | 249 | 76d | 0d |  |
| 251 | 4.2.3 | Low Level Design Preparation |  | 5d | 2018-03-04 | 2018-03-08 | 250 | 76d |  |  |
| 252 | 4.2.4 | Verification Test Specification |  | 5d | 2018-03-04 | 2018-03-08 | 250 | 76d |  |  |
| 253 | 4.3 | MS 2: LI-IMS Solution Design Complete | milestone | 0d | 2018-03-08 | 2018-03-08 | 248 | 141d |  |  |
| 254 | 4.4 | Lift of patch for Etisalat LI-IMS(MED) |  | 30d | 2018-02-04 | 2018-03-15 | 247FS+5d | 71d | 11d |  |
| 255 | 4.5 | **HW and SW ordering** |  | 36d | 2018-02-04 | 2018-03-25 |  | 60d |  |  |
| 256 | 4.5.1 | **HW Ordering** |  | 36d | 2018-02-04 | 2018-03-25 |  | 60d | 0d |  |
| 257 | 4.5.1.1 | Order Placed as per BoQ |  | 1d | 2018-02-04 | 2018-02-04 | 247FS+5d | 60d | 0d |  |
| 258 | 4.5.1.2 | Lead Time for HW delivery |  | 7w | 2018-02-05 | 2018-03-25 | 257 | 60d |  |  |
| 259 | 4.5.2 | **SW Ordering** |  | 10d | 2018-02-04 | 2018-02-15 |  | 156d |  |  |
| 260 | 4.5.2.1 | SW ordering |  | 1w | 2018-02-04 | 2018-02-08 | 257SS | 156d | 0d |  |
| 261 | 4.5.2.2 | Licenses ordering |  | 5d | 2018-02-11 | 2018-02-15 | 260 | 156d |  |  |
| 262 | 4.6 | **Site Engineering & HW Installation** |  | 21d | 2018-03-04 | 2018-04-01 |  | 60d | 0d |  |
| 263 | 4.6.1 | Site Survey |  | 1d | 2018-03-04 | 2018-03-05 | 264SF-5d | 80d |  | start no earlier than 2016-06-21 |
| 264 | 4.6.2 | Enginnering Documentation |  | 5d | 2018-03-12 | 2018-03-19 | 265SF-5d | 70d | 0d | start no earlier than 2016-06-21 |
| 265 | 4.6.3 | HW Installation & Cabling |  | 5d | 2018-03-26 | 2018-04-01 | 256 | 60d | 0d | start no earlier than 2016-06-21 |
| 266 | 4.7 | MS 3: LI-IMS power on | milestone | 0d | 2018-04-01 | 2018-04-01 | 262 | 125d |  |  |

| ID | WBS | Task | Type | Duration | Start | Finish | Predecessors | Total slack | Free slack |
| --- | --- | --- | --- | --- | --- | --- | --- | --- | --- |
| 267 | 4.8 | **Solution Deployment** |  | 30d | 2018-04-02 | 2018-05-13 |  | 60d | 0d |
| 268 | 4.8.1 | SW installation and configuration |  | 10d | 2018-04-02 | 2018-04-15 | 248, 254, 262 | 60d | 0d |
| 269 | 4.8.2 | **Integtation** |  | 20d | 2018-04-16 | 2018-05-13 |  | 60d |  |
| 270 | 4.8.2.1 | SL serivce implement |  | 5d | 2018-04-16 | 2018-04-22 | 268 | 60d | 0d |
| 271 | 4.8.2.2 | SBG integration |  | 5d | 2018-04-23 | 2018-04-29 | 270 | 60d | 0d |
| 272 | 4.8.2.3 | MTAS integration |  | 5d | 2018-04-30 | 2018-05-06 | 271 | 60d | 0d |
| 273 | 4.8.2.4 | CSCF integration |  | 5d | 2018-05-07 | 2018-05-13 | 272 | 60d |  |
| 274 | 4.9 | MS 4: LI-IMS Implementation Complete | milestone | 0d | 2018-05-13 | 2018-05-13 | 267 | 95d |  |
| 275 | 4.10 | Internal Verification |  | 10d | 2018-05-14 | 2018-05-27 | 267 | 60d | 0d |
| 276 | 4.11 | MS 5: LI-IMS Ready for Acceptance | milestone | 0d | 2018-05-27 | 2018-05-27 | 275 | 60d | 0d |
| 277 | 4.12 | Customer Acceptance |  | 10d | 2018-05-28 | 2018-06-10 | 276 | 60d | 0d |
| 278 | 4.13 | MS 6: LI-IMS Ready for Service | milestone | 0d | 2018-06-10 | 2018-06-10 | 277 | 60d | 0d |
| 279 | 4.14 | Traffic Cutover |  | 10d | 2018-06-11 | 2018-06-25 | 278 | 60d | 0d |
| 280 | 4.15 | MS 7: LI-IMS in service | milestone | 0d | 2018-06-25 | 2018-06-25 | 279 | 65d |  |
| 281 | 4.16 | Handover |  | 5d | 2018-06-26 | 2018-07-02 | 279 | 60d |  |
